# Agrimeter_V6

Schedule from MS Project, 2013-01-24 to 2013-05-13, costs in $, A marks actual dates.

## Calendars

- Standard: Mon-Fri 08:00-12:00, 13:00-17:00; Sat-Sun off. Exceptions (off unless hours are given): 2013-03-25 to 2013-03-29 (Holy Week).

## Resources

| Resource | Rate |
| --- | --- |
| Roberto | 21.63 |
| Eddrick | 19.23 |
| Rogelio | 19.23 |

## Schedule

| ID | WBS | Task | Type | Duration | Start | Finish | Predecessors | Complete | Remaining | Total slack | Deadline | Resources | Work | Actual work | Cost | Actual cost |
| --- | --- | --- | --- | --- | --- | --- | --- | --- | --- | --- | --- | --- | --- | --- | --- | --- |
| 1 | 1 | **Agrimeter System** |  | 73d | 2013-01-24 A | 2013-05-13 |  | 61% | 28.78d |  |  |  | 543.6h | 228.8h | 10,881.73 | 4,572.12 |
| 2 | 1.1 | **System Specification** |  | 16d | 2013-01-24 A | 2013-02-14 A |  | 100% |  |  |  |  | 99.6h | 99.6h | 1,995.19 | 1,995.19 |
| 3 | 1.1.1 | Definition of Needs |  | 1d | 2013-01-24 A | 2013-01-24 A |  | 100% |  |  |  | Eddrick [25%]; Roberto [25%]; Rogelio [25%] | 6h | 6h | 120.19 | 120.19 |
| 4 | 1.1.2 | Concept Development |  | 1d | 2013-01-25 A | 2013-01-25 A | 3 | 100% |  |  |  | Eddrick [25%]; Roberto [25%]; Rogelio [25%] | 6h | 6h | 120.19 | 120.19 |
| 5 | 1.1.3 | Analysis of Alternatives |  | 1d | 2013-01-28 A | 2013-01-28 A | 4 | 100% |  |  |  | Eddrick [20%]; Roberto [20%]; Rogelio [20%] | 4.8h | 4.8h | 96.15 | 96.15 |
| 6 | 1.1.4 | System Requirements Assessment |  | 1d | 2013-01-28 A | 2013-01-28 A | 5SS | 100% |  |  |  | Eddrick [20%]; Roberto [20%]; Rogelio [20%] | 4.8h | 4.8h | 96.15 | 96.15 |
| 7 | 1.1.5 | Specs Document Elavoration |  | 5d | 2013-01-29 A | 2013-02-04 A | 6 | 100% |  |  |  | Eddrick [35%]; Roberto [35%]; Rogelio [35%] | 42h | 42h | 841.35 | 841.35 |
| 8 | 1.1.6 | Negotiation with Client |  | 7d | 2013-02-05 A | 2013-02-13 A | 7 | 100% |  |  |  | Eddrick [20%]; Roberto [20%]; Rogelio [20%] | 33.6h | 33.6h | 673.08 | 673.08 |
| 9 | 1.1.7 | Contract | milestone | 1d | 2013-02-14 A | 2013-02-14 A | 8 | 100% |  |  | 2013-02-14 | Eddrick [10%]; Roberto [10%]; Rogelio [10%] | 2.4h | 2.4h | 48.08 | 48.08 |
| 10 | 1.2 | **System Design** |  | 17d | 2013-02-15 A | 2013-03-11 | 9 | 99% | 0.13d | 0d |  |  | 132.8h | 129.2h | 2,649.04 | 2,576.92 |
| 11 | 1.2.1 | Overall System Architecture |  | 1d | 2013-02-15 A | 2013-02-15 A | 9 | 100% |  |  |  | Eddrick [30%]; Roberto [30%]; Rogelio [30%] | 7.2h | 7.2h | 144.23 | 144.23 |
| 12 | 1.2.2 | **Hardware Design** |  | 15d | 2013-02-18 A | 2013-03-08 A | 11 | 100% |  |  |  |  | 42h | 42h | 807.69 | 807.69 |
| 13 | 1.2.2.1 | **Microcontroller Unit Design** |  | 15d | 2013-02-18 A | 2013-03-08 A |  | 100% |  |  |  |  | 17.2h | 17.2h | 330.77 | 330.77 |
| 14 | 1.2.2.1.1 | Analysis and Selection of MCU |  | 2d | 2013-02-18 A | 2013-02-19 A | 11 | 100% |  |  |  | Rogelio [10%] | 1.6h | 1.6h | 30.77 | 30.77 |
| 15 | 1.2.2.1.2 | Design MCU Functions |  | 13d | 2013-02-20 A | 2013-03-08 A | 14 | 100% |  |  |  | Rogelio [15%] | 15.6h | 15.6h | 300 | 300 |
| 16 | 1.2.2.2 | **GPS Module Design** |  | 3d | 2013-02-18 A | 2013-02-20 A |  | 100% |  |  |  |  | 2h | 2h | 38.46 | 38.46 |
| 17 | 1.2.2.2.1 | GPS Selection |  | 2d | 2013-02-18 A | 2013-02-19 A | 11 | 100% |  |  |  | Rogelio [10%] | 1.6h | 1.6h | 30.77 | 30.77 |
| 18 | 1.2.2.2.2 | Define Data Output Format |  | 1d | 2013-02-20 A | 2013-02-20 A | 17 | 100% |  |  |  | Rogelio [3%] | 0.24h | 0.24h | 4.62 | 4.62 |
| 19 | 1.2.2.2.3 | Define Baudrate |  | 1d | 2013-02-20 A | 2013-02-20 A | 18SS | 100% |  |  |  | Rogelio [2%] | 0.16h | 0.16h | 3.08 | 3.08 |
| 20 | 1.2.2.3 | **User Interface Design** |  | 15d | 2013-02-18 A | 2013-03-08 A |  | 100% |  |  |  |  | 17.2h | 17.2h | 330.77 | 330.77 |
| 21 | 1.2.2.3.1 | LCD Selection |  | 2d | 2013-02-18 A | 2013-02-19 A | 11 | 100% |  |  |  | Rogelio [10%] | 1.6h | 1.6h | 30.77 | 30.77 |
| 22 | 1.2.2.3.2 | Design LCD Functions |  | 13d | 2013-02-20 A | 2013-03-08 A | 21 | 100% |  |  |  | Rogelio [15%] | 15.6h | 15.6h | 300 | 300 |
| 23 | 1.2.2.4 | Bluetooth/GSM Module Selection |  | 2d | 2013-02-18 A | 2013-02-19 A | 11 | 100% |  |  |  | Rogelio [10%] | 1.6h | 1.6h | 30.77 | 30.77 |
| 24 | 1.2.2.5 | SD Card Module Selection |  | 2d | 2013-02-18 A | 2013-02-19 A | 11 | 100% |  |  |  | Rogelio [10%] | 1.6h | 1.6h | 30.77 | 30.77 |
| 25 | 1.2.2.6 | Design Circuit |  | 2d | 2013-02-20 A | 2013-02-21 A | 14, 17, 21, 23, 24 | 100% |  |  |  | Rogelio [15%] | 2.4h | 2.4h | 46.15 | 46.15 |

| ID | WBS | Task | Type | Duration | Start | Finish | Predecessors | Complete | Total slack | Constraint | Deadline | Resources | Work | Actual work | Cost | Actual cost |
| --- | --- | --- | --- | --- | --- | --- | --- | --- | --- | --- | --- | --- | --- | --- | --- | --- |
| 26 | 1.2.3 | **Android Application Design** |  | 15d | 2013-02-18 A | 2013-03-08 A | 11 | 100% |  |  |  |  | 43.2h | 43.2h | 830.77 | 830.77 |
| 27 | 1.2.3.1 | **User Interface** |  | 4d | 2013-02-18 A | 2013-02-21 A |  | 100% |  |  |  |  | 12.8h | 12.8h | 246.15 | 246.15 |
| 28 | 1.2.3.1.1 | Design XML |  | 4d | 2013-02-18 A | 2013-02-21 A | 11 | 100% |  |  |  | Eddrick [20%] | 6.4h | 6.4h | 123.08 | 123.08 |
| 29 | 1.2.3.1.2 | Design GUI |  | 4d | 2013-02-18 A | 2013-02-21 A | 28SS | 100% |  |  |  | Eddrick [20%] | 6.4h | 6.4h | 123.08 | 123.08 |
| 30 | 1.2.3.2 | **Programming Modules** |  | 11d | 2013-02-22 A | 2013-03-08 A |  | 100% |  |  |  |  | 30.4h | 30.4h | 584.62 | 584.62 |
| 31 | 1.2.3.2.1 | Design Activities |  | 5d | 2013-02-22 A | 2013-02-28 A | 28, 29 | 100% |  |  |  | Eddrick [40%] | 16h | 16h | 307.69 | 307.69 |
| 32 | 1.2.3.2.2 | **Supporting Classes** |  | 6d | 2013-03-01 A | 2013-03-08 A |  | 100% |  |  |  |  | 14.4h | 14.4h | 276.92 | 276.92 |
| 33 | 1.2.3.2.2.1 | Design Data Interpretation for Gathered Data |  | 2d | 2013-03-01 A | 2013-03-04 A | 31 | 100% |  |  |  | Eddrick [30%] | 4.8h | 4.8h | 92.31 | 92.31 |
| 34 | 1.2.3.2.2.2 | Define Logic to Calculate Distances |  | 2d | 2013-03-05 A | 2013-03-06 A | 33 | 100% |  |  |  | Eddrick [30%] | 4.8h | 4.8h | 92.31 | 92.31 |
| 35 | 1.2.3.2.2.3 | Design Database and Bluetooth Connectivity |  | 2d | 2013-03-07 A | 2013-03-08 A | 34 | 100% |  |  |  | Eddrick [30%] | 4.8h | 4.8h | 92.31 | 92.31 |
| 36 | 1.2.4 | **Web Application** |  | 15d | 2013-02-18 A | 2013-03-08 A | 11 | 100% |  |  |  |  | 36.8h | 36.8h | 794.23 | 794.23 |
| 37 | 1.2.4.1 | Search/Create Hosting Service |  | 2d | 2013-02-18 A | 2013-02-19 A | 11 | 100% |  |  |  | Roberto [30%] | 4.8h | 4.8h | 103.85 | 103.85 |
| 38 | 1.2.4.2 | **Design Database** |  | 13d | 2013-02-20 A | 2013-03-08 A |  | 100% |  |  |  |  | 13.28h | 13.28h | 285.38 | 285.38 |
| 39 | 1.2.4.2.1 | Define data to be stored in the DB |  | 13d | 2013-02-20 A | 2013-03-08 A | 37 | 100% |  |  |  | Roberto [6%] | 6.24h | 6.24h | 135 | 135 |
| 40 | 1.2.4.2.2 | Design ER Diagram |  | 2d | 2013-03-05 A | 2013-03-06 A | 37 | 100% |  | finish no earlier than 2013-02-08 |  | Eddrick [5%] | 0.8h | 0.8h | 15.38 | 15.38 |
| 41 | 1.2.4.2.3 | Define Queries for DB |  | 13d | 2013-02-20 A | 2013-03-08 A | 37 | 100% |  |  |  | Roberto [6%] | 6.24h | 6.24h | 135 | 135 |
| 42 | 1.2.4.3 | **Define the Web App** |  | 13d | 2013-02-20 A | 2013-03-08 A |  | 100% |  |  |  |  | 18.72h | 18.72h | 405 | 405 |
| 43 | 1.2.4.3.1 | List all Web Pages |  | 13d | 2013-02-20 A | 2013-03-08 A | 37 | 100% |  |  |  | Roberto [6%] | 6.24h | 6.24h | 135 | 135 |
| 44 | 1.2.4.3.2 | Define each page functionality |  | 13d | 2013-02-20 A | 2013-03-08 A | 37 | 100% |  |  |  | Roberto [6%] | 6.24h | 6.24h | 135 | 135 |
| 45 | 1.2.4.3.3 | Design Webpages Layout / GUI |  | 13d | 2013-02-20 A | 2013-03-08 A | 37 | 100% |  |  |  | Roberto [6%] | 6.24h | 6.24h | 135 | 135 |
| 46 | 1.2.5 | Demonstrate System Design | milestone | 1d | 2013-03-11 | 2013-03-11 | 15, 22, 35, 45 |  | 0d |  | 2013-03-11 | Eddrick [15%]; Roberto [15%]; Rogelio [15%] | 3.6h |  | 72.12 |  |
| 47 | 1.3 | **System Implementation** |  | 8d | 2013-03-13 | 2013-03-22 | 46FS+1d |  | 0d |  |  |  | 93.6h |  | 1,876.92 |  |
| 48 | 1.3.1 | **Hardware** |  | 8d | 2013-03-13 | 2013-03-22 |  |  | 0d |  |  |  | 29.6h |  | 569.23 |  |
| 49 | 1.3.1.1 | Implement MCU Functions |  | 5d | 2013-03-13 | 2013-03-19 | 46FS+1d |  | 0d |  |  | Rogelio [25%] | 10h |  | 192.31 |  |
| 50 | 1.3.1.2 | Setup GPS Module |  | 1d | 2013-03-20 | 2013-03-20 | 49 |  | 2d |  |  | Rogelio [7%] | 0.56h |  | 10.77 |  |
| 51 | 1.3.1.3 | Implement LCD Functions |  | 5d | 2013-03-13 | 2013-03-19 | 49SS |  | 3d |  |  | Rogelio [25%] | 10h |  | 192.31 |  |
| 52 | 1.3.1.4 | Implement SD Card Functionality |  | 3d | 2013-03-20 | 2013-03-22 | 49 |  | 0d |  |  | Rogelio [35%] | 8.4h |  | 161.54 |  |
| 53 | 1.3.1.5 | Setup Bluetooth/GSM Module |  | 1d | 2013-03-20 | 2013-03-20 | 49 |  | 2d |  |  | Rogelio [8%] | 0.64h |  | 12.31 |  |

| ID | WBS | Task | Type | Duration | Start | Finish | Predecessors | Total slack | Deadline | Resources | Work | Cost |
| --- | --- | --- | --- | --- | --- | --- | --- | --- | --- | --- | --- | --- |
| 54 | 1.3.2 | **Android App** |  | 8d | 2013-03-13 | 2013-03-22 |  | 0d |  |  | 32h | 615.38 |
| 55 | 1.3.2.1 | Implement XML & GUI (User Interface) |  | 5d | 2013-03-13 | 2013-03-19 | 46FS+1d | 0d |  | Eddrick [25%] | 10h | 192.31 |
| 56 | 1.3.2.2 | Implement Supporting Classes |  | 5d | 2013-03-13 | 2013-03-19 | 55SS | 0d |  | Eddrick [25%] | 10h | 192.31 |
| 57 | 1.3.2.3 | Integrate User Interface with Supporting Classes |  | 3d | 2013-03-20 | 2013-03-22 | 55, 56 | 0d |  | Eddrick [50%] | 12h | 230.77 |
| 58 | 1.3.3 | **Web Application** |  | 8d | 2013-03-13 | 2013-03-22 |  |  |  |  | 32h | 692.31 |
| 59 | 1.3.3.1 | Implement Database Structure and Queries |  | 2d | 2013-03-13 | 2013-03-14 | 46FS+1d | 0d |  | Roberto [50%] | 8h | 173.08 |
| 60 | 1.3.3.2 | Create GUI |  | 6d | 2013-03-15 | 2013-03-22 | 59 | 0d |  | Roberto [25%] | 12h | 259.62 |
| 61 | 1.3.3.3 | Create all webpages |  | 6d | 2013-03-15 | 2013-03-22 | 60SS | 0d |  | Roberto [25%] | 12h | 259.62 |
| 62 | 1.4 | **Module Testing** |  | 6d | 2013-04-01 | 2013-04-08 | 48, 54, 58 | 0d |  |  | 64.8h | 1,298.08 |
| 63 | 1.4.1 | Test MCU |  | 3d | 2013-04-01 | 2013-04-03 |  | 0d |  | Rogelio [25%] | 6h | 115.38 |
| 64 | 1.4.2 | Test LCD |  | 3d | 2013-04-01 | 2013-04-03 | 63SS | 0d |  | Rogelio [25%] | 6h | 115.38 |
| 65 | 1.4.3 | Test GPS |  | 1d | 2013-04-04 | 2013-04-04 | 64 | 0d |  | Rogelio [50%] | 4h | 76.92 |
| 66 | 1.4.4 | Test Bluetooth/GSM Module |  | 1d | 2013-04-05 | 2013-04-05 | 65 | 0d |  | Rogelio [25%] | 2h | 38.46 |
| 67 | 1.4.5 | Test SD Card |  | 1d | 2013-04-05 | 2013-04-05 | 65 | 0d |  | Rogelio [25%] | 2h | 38.46 |
| 68 | 1.4.6 | Test Android Application |  | 5d | 2013-04-01 | 2013-04-05 |  | 0d |  | Eddrick [50%] | 20h | 384.62 |
| 69 | 1.4.7 | Test Database |  | 5d | 2013-04-01 | 2013-04-05 |  | 0d |  | Roberto [25%] | 10h | 216.35 |
| 70 | 1.4.8 | Test Web Application |  | 5d | 2013-04-01 | 2013-04-05 | 69SS | 0d |  | Roberto [25%] | 10h | 216.35 |
| 71 | 1.4.9 | Demonstrate Module Testing | milestone | 1d | 2013-04-08 | 2013-04-08 | 66, 67, 68, 69, 70 | 0d | 2013-04-08 | Rogelio [20%]; Eddrick [20%]; Roberto [20%] | 4.8h | 96.15 |
| 72 | 1.5 | **System Integration** |  | 14d | 2013-04-10 | 2013-04-29 | 62FS+1d | 0d |  |  | 91.6h | 1,836.54 |
| 73 | 1.5.1 | GPS/ MCU / Bluetooth/ GSM Module Integration and Unit Testing |  | 2d | 2013-04-10 | 2013-04-11 |  | 0d |  | Rogelio [50%] | 8h | 153.85 |
| 74 | 1.5.2 | Bluetooth Module/Android Integration and Unit Testing |  | 2d | 2013-04-12 | 2013-04-15 | 73 | 0d |  | Rogelio [25%]; Eddrick [25%] | 6h | 115.38 |
| 75 | 1.5.3 | Android/Database Integration and Unit Testing |  | 2d | 2013-04-12 | 2013-04-15 | 74SS | 10d |  | Roberto [25%]; Eddrick [25%] | 8h | 163.46 |
| 76 | 1.5.4 | Web Application/Database Integration and Unit Testing |  | 2d | 2013-04-10 | 2013-04-11 | 73SS | 12d |  | Roberto [50%] | 8h | 173.08 |
| 77 | 1.5.5 | Hardware Components/PCB Integration |  | 2d | 2013-04-16 | 2013-04-17 | 74 | 0d |  | Rogelio [25%] | 4h | 76.92 |
| 78 | 1.5.6 | Full System Integration |  | 4d | 2013-04-18 | 2013-04-23 | 77 | 0d |  | Roberto [30%]; Rogelio [30%]; Eddrick [30%] | 28.8h | 576.92 |
| 79 | 1.5.7 | Integration Testing |  | 3d | 2013-04-24 | 2013-04-26 | 78 | 0d |  | Roberto [30%]; Rogelio [30%]; Eddrick [30%] | 21.6h | 432.69 |
| 80 | 1.5.8 | System Demonstration | milestone | 1d | 2013-04-29 | 2013-04-29 | 79 | 0d | 2013-04-29 | Roberto [30%]; Rogelio [30%]; Eddrick [30%] | 7.2h | 144.23 |

| ID | WBS | Task | Duration | Start | Finish | Predecessors | Total slack | Deadline | Resources | Work | Cost |
| --- | --- | --- | --- | --- | --- | --- | --- | --- | --- | --- | --- |
| 81 | 1.6 | **Delivery** | 9d | 2013-05-01 | 2013-05-13 | 72FS+1d | 0d |  |  | 61.2h | 1,225.96 |
| 82 | 1.6.1 | Deployment on Site | 3d | 2013-05-01 | 2013-05-03 |  | 0d |  | Roberto [30%]; Rogelio [30%]; Eddrick [30%] | 21.6h | 432.69 |
| 83 | 1.6.2 | Training | 3d | 2013-05-06 | 2013-05-08 | 82 | 0d |  | Roberto [25%]; Rogelio [25%]; Eddrick [25%] | 18h | 360.58 |
| 84 | 1.6.3 | Client Acceptance | 3d | 2013-05-09 | 2013-05-13 | 83 | 0d | 2013-05-17 | Roberto [30%]; Rogelio [30%]; Eddrick [30%] | 21.6h | 432.69 |
